# 0000 Назва ЗЗ вер.2

How a schedule from MS Project changed from version to version. A marks actual dates.

## Version 1 (data date 2026-01-06, saved 2026-01-25)

Note of the change: Готово к наладке

| ID | WBS | Task | Duration | Start | Finish | Predecessors | Complete | Total float | Constraint |
| --- | --- | --- | --- | --- | --- | --- | --- | --- | --- |
| 1 | 1 | **1269_Юрпак** | 26.5d | 2025-12-26 A | 2026-02-02 |  | 75% | 106.5d |  |
| 2 | 1.1 | **1269-1** | 26.5d | 2025-12-26 A | 2026-02-02 |  | 35% | 106.5d |  |
| 3 |  | КД | 2d | 2025-12-26 A | 2026-01-06 A |  | 100% |  |  |
| 4 |  | Комплектація | 1d | 2026-01-22 A | 2026-01-22 A | 3 | 100% |  | start no earlier than 2026-01-17 |
| 5 |  | Виробництво | 5d | 2026-01-26 | 2026-01-30 | 4 |  | 106.5d | start no earlier than 2026-01-25 |
| 6 |  | ВТК | 0.5d | 2026-02-02 | 2026-02-02 | 5 |  | 106.5d | start no earlier than 2026-01-14 |
| 7 | 1.2 | **1269-2** | 13d | 2026-01-06 A | 2026-01-22 A |  | 100% |  |  |
| 8 |  | КД | 5d | 2026-01-06 A | 2026-01-12 A |  | 100% |  | start no earlier than 2026-01-05 |
| 9 |  | Комплектація | 1d | 2026-01-22 A | 2026-01-22 A | 8 | 100% |  | start no earlier than 2026-01-17 |
| 10 | 1.3 | **1269-3** | 13d | 2026-01-06 A | 2026-01-22 A |  | 100% |  |  |
| 11 |  | КД | 5d | 2026-01-06 A | 2026-01-12 A |  | 100% |  | start no earlier than 2026-01-05 |
| 12 |  | Комплектація | 1d | 2026-01-22 A | 2026-01-22 A | 11 | 100% |  | start no earlier than 2026-01-17 |
| 13 | 1.4 | **1269-4** | 13d | 2026-01-06 A | 2026-01-22 A |  | 100% |  |  |
| 14 |  | КД | 0.25d | 2026-01-06 A | 2026-01-06 A |  | 100% |  | start no earlier than 2026-01-05 |
| 15 |  | Комплектація | 1d | 2026-01-22 A | 2026-01-22 A | 14 | 100% |  | start no earlier than 2026-01-17 |
| 16 |  | Відвантаження | 0d | 2026-02-02 | 2026-02-02 | 12, 9, 15, 6 |  | 106.5d | start no earlier than 2026-01-30 |

## Version 2 (data date 2026-01-06, saved 2026-02-20)

Note of the change: Добавлено изменение скорости главного привода

Last finish 2026-02-02 → 2026-02-20 (+18d). Complete tasks 8 → 14.

Added:

| ID | Task | Duration | Start | Finish | Predecessors |
| --- | --- | --- | --- | --- | --- |
| 10 | Виробництво | 5d | 2026-01-31 A | 2026-02-06 A | 9 |
| 11 | ВТК | 1d | 2026-02-12 A | 2026-02-12 A | 10 |
| 15 | Виробництво | 5d | 2026-01-31 A | 2026-02-06 A | 14 |
| 16 | ВТК | 1d | 2026-02-12 A | 2026-02-12 A | 15 |

Changed:

| ID | Task | Start | Finish | Duration | Complete | Total float | Other |
| --- | --- | --- | --- | --- | --- | --- | --- |
| 1 | **1269_Юрпак** |  | 2026-02-02 → 2026-02-20 A (+18d) | 26.5d → 41d | 75% → 100% | 106.5d → none |  |
| 2 | **1269-1** |  | 2026-02-02 → 2026-02-20 A (+18d) | 26.5d → 41d | 35% → 100% | 106.5d → none |  |
| 5 | Виробництво | 2026-01-26 → 2026-02-09 A (+14d) | 2026-01-30 → 2026-02-19 A (+20d) | 5d → 9d | 0% → 100% | 106.5d → none | constraint start no earlier than 2026-01-25 → start no earlier than 2026-01-31 |
| 6 | ВТК | 2026-02-02 → 2026-02-20 A (+18d) | 2026-02-02 → 2026-02-20 A (+18d) | 0.5d → 1d | 0% → 100% | 106.5d → none |  |
| 7 | **1269-2** |  | 2026-01-22 A → 2026-02-12 A (+21d) | 13d → 28d |  |  |  |
| 12 | **1269-3** |  | 2026-01-22 A → 2026-02-12 A (+21d) | 13d → 28d |  |  |  |
| 20 | Відвантаження | 2026-02-02 → 2026-02-20 (+18d) | 2026-02-02 → 2026-02-20 (+18d) |  |  | 106.5d → 92d |  |
